Schedule from MS Project, 2019-09-09 to 2020-09-22.

## Calendars

- Standard: Mon-Fri 08:00-12:00, 13:00-17:00; Sat-Sun off.

## Resources

| Resource |
| --- |
| PM1 |
| PM2 |
| PM3 |
| PM4 |
| RE1 |
| RE2 |
| RE3 |
| RE4 |
| RE5 |
| RE6 |
| RE7 |
| RE8 |
| RE9 |
| RE10 |
| SE5 |
| SE6 |
| SE7 |
| SE8 |
| SE9 |
| SE10 |
| SE20 |
| SE30 |
| SE40 |
| SE41 |
| PE1 |
| PE2 |
| PE3 |
| PE4 |
| PE5 |
| PE6 |
| PE7 |
| PE8 |
| PE9 |
| PE10 |
| TE1 |
| TE2 |
| TE3 |
| TE4 |
| TE5 |
| TE6 |
| TE7 |
| TE8 |
| TE9 |
| TE10 |
| DE1 |
| DE2 |
| DE3 |
| DE4 |
| DE5 |
| DE6 |
| DE7 |
| DE8 |
| PM7 |
| PM8 |
| PM9 |
| RE212 |
| RE213 |
| RE214 |
| PE214 |
| PE215 |
| PE216 |
| TE194 |
| TE196 |
| SE75001 |
| SE75002 |
| SE75003 |
| TE5001 |
| TE75002 |
| TE75003 |
| PE5001 |
| PE5002 |
| PE5003 |
| PE5004 |

## Schedule

| ID | WBS | Task | Duration | Start | Finish | Predecessors | Total slack | Free slack | Resources | Work |
| --- | --- | --- | --- | --- | --- | --- | --- | --- | --- | --- |
| 1 | 1 | **Project 1** | 271.57d | 2019-09-09 | 2020-09-22 |  | 0d |  |  | 8079.36h |
| 2 | 1.1 | **Project Plan** | 8.7d | 2019-09-09 | 2019-09-19 |  |  |  |  | 202h |
| 3 | 1.1.1 | Write Plan | 4.25d | 2019-09-09 | 2019-09-13 |  | 0d |  | PM1 | 34h |
| 4 | 1.1.2 | **Review Plan** | 3.82d | 2019-09-13 | 2019-09-19 | 3 | 0d |  |  | 162.96h |
| 5 | 1.1.2.1 | Preparation for review | 2.55d | 2019-09-13 | 2019-09-17 | 3 | 0d |  | PE1; RE1; SE5; TE1; DE5 | 102h |
| 6 | 1.1.2.2 | Review Meeting | 1.27d | 2019-09-17 | 2019-09-19 | 5 | 0d |  | PE1; PM1; RE1; SE5; TE1; DE5 | 60.96h |
| 7 | 1.1.3 | Rework | 0.63d | 2019-09-19 | 2019-09-19 | 6 | 0d |  | PM1 | 5.04h |
| 8 | 1.2 | **Risk Mitigation and Contingency Plan** | 8.13d | 2019-09-19 | 2019-10-01 | 7 | 60.17d |  |  | 175.2h |
| 9 | 1.2.1 | Write Plan | 3.75d | 2019-09-19 | 2019-09-25 | 7 | 60.17d | 0d | PM1 | 30h |
| 10 | 1.2.2 | **Review Plan** | 3.13d | 2019-09-25 | 2019-09-30 | 9 | 60.17d |  |  | 135.2h |
| 11 | 1.2.2.1 | Preparation for review | 1.88d | 2019-09-25 | 2019-09-27 | 9 | 60.17d | 0d | TE1; PE1; RE1; SE5; DE5 | 75.2h |
| 12 | 1.2.2.2 | Review Meeting | 1.25d | 2019-09-27 | 2019-09-30 | 11 | 60.17d | 0d | PE1; PM1; RE1; SE5; TE1; DE5 | 60h |
| 13 | 1.2.3 | Rework | 1.25d | 2019-09-30 | 2019-10-01 | 12 | 60.17d |  | PM1 | 10h |
| 14 | 1.3 | **Requirement** | 68.31d | 2019-09-19 | 2019-12-25 | 7 | 0d |  |  | 1866.64h |
| 15 | 1.3.1 | Write Requirements | 7.97d | 2019-09-19 | 2019-10-01 | 7 | 0d |  | RE2; RE3 | 127.52h |
| 16 | 1.3.2 | Write Use Case Model | 36.48d | 2019-10-01 | 2019-11-21 | 15 | 0d |  | RE3; RE2; RE4; RE5 | 915.04h |
| 17 | 1.3.3 | **Review Requirements/Use Case Model** | 22.46d | 2019-11-21 | 2019-12-23 | 16 | 0d |  |  | 801.68h |
| 18 | 1.3.3.1 | Preparation for review-Requirements | 6.38d | 2019-11-21 | 2019-11-29 | 16 | 0d |  | PE1; RE1; SE5; TE1 | 204.16h |
| 19 | 1.3.3.2 | Preparation for Review- Use Cases | 5.71d | 2019-11-29 | 2019-12-09 | 18 | 0d |  | PE2; RE10; SE6; TE2 | 182.72h |
| 20 | 1.3.3.3 | Review Meeting-Requirements | 5.79d | 2019-12-09 | 2019-12-17 | 19 | 0d |  | PE1; RE1; SE5; TE1; RE2 | 231.6h |
| 21 | 1.3.3.4 | Review Meeting-Use Cases | 4.58d | 2019-12-17 | 2019-12-23 | 20 | 0d |  | PE2; RE10; SE6; TE2; RE4 | 183.2h |
| 22 | 1.3.4 | Rework | 1.4d | 2019-12-23 | 2019-12-25 | 21 | 0d |  | RE2; RE5 | 22.4h |
| 23 | 1.4 | **Analysis** | 9.63d | 2019-12-25 | 2020-01-07 | 13, 22 | 0d |  |  | 295.12h |
| 24 | 1.4.1 | Write Analysis Document | 1.53d | 2019-12-25 | 2019-12-26 | 13, 22 | 0d |  | SE9; SE20; SE10 | 36.8h |

| ID | WBS | Task | Duration | Start | Finish | Predecessors | Total slack | Resources | Work |
| --- | --- | --- | --- | --- | --- | --- | --- | --- | --- |
| 25 | 1.4.2 | **Review Analysis Document** | 6.9d | 2019-12-26 | 2020-01-06 | 24 | 0d |  | 239.2h |
| 26 | 1.4.2.1 | Preparation for Analysis Document | 4.6d | 2019-12-26 | 2020-01-02 | 24 | 0d | RE10; SE41; PE10; TE4 | 147.2h |
| 27 | 1.4.2.2 | Review Meeting | 2.3d | 2020-01-02 | 2020-01-06 | 26 | 0d | SE9; RE10; SE41; PE10; TE4 | 92h |
| 28 | 1.4.3 | Rework | 1.2d | 2020-01-06 | 2020-01-07 | 27 | 0d | SE10; SE9 | 19.12h |
| 29 | 1.5 | **Design** | 20.65d | 2020-01-07 | 2020-02-05 | 28 | 0d |  | 608.32h |
| 30 | 1.5.1 | Write DD | 3.17d | 2020-01-07 | 2020-01-10 | 28 | 0d | SE5; SE7; SE9; SE41 | 101.52h |
| 31 | 1.5.2 | **Review DD** | 7.61d | 2020-01-10 | 2020-01-22 | 30 | 0d |  | 263.76h |
| 32 | 1.5.2.1 | Preparation for DD | 5.08d | 2020-01-10 | 2020-01-17 | 30 | 0d | PE2; RE10; TE2; SE40 | 162.56h |
| 33 | 1.5.2.2 | Review Meeting | 2.53d | 2020-01-17 | 2020-01-22 | 32 | 0d | PE2; RE10; TE2; SE40; SE41 | 101.2h |
| 34 | 1.5.3 | Rework | 3.28d | 2020-01-22 | 2020-01-27 | 33 | 0d | SE7; SE9 | 52.48h |
| 35 | 1.5.4 | Write Data Model(DM) | 2.12d | 2020-01-27 | 2020-01-29 | 34 | 0d | SE6; SE8; SE10; SE30 | 68h |
| 36 | 1.5.5 | **Review DM** | 4.46d | 2020-01-29 | 2020-02-05 | 35 | 0d |  | 122.56h |
| 37 | 1.5.5.1 | Preparation for DM | 2.13d | 2020-01-29 | 2020-01-31 | 35 | 0d | PE1; RE1; SE5; TE1 | 68.16h |
| 38 | 1.5.5.2 | Review Meeting | 0.71d | 2020-01-31 | 2020-02-03 | 37 | 0d | PE1; RE1; SE5; TE1; SE30 | 28.4h |
| 39 | 1.5.5.3 | Rework | 1.62d | 2020-02-03 | 2020-02-05 | 38 | 0d | SE30; SE8 | 26h |
| 40 | 1.6 | **Coding and Unit test** | 132.88d | 2020-02-05 | 2020-08-10 | 39 | 0d |  | 2802.96h |
| 41 | 1.6.1 | Write Code | 84.91d | 2020-02-05 | 2020-06-03 | 39 | 0d | PE6; PE7; PE8; PE9; PE10 | 1420h |
| 42 | 1.6.2 | **Unit Testing** | 29.75d | 2020-06-03 | 2020-07-14 | 41 | 0d |  | 780h |
| 43 | 1.6.2.1 | Prepare/Execute Test Cases | 9.33d | 2020-06-03 | 2020-06-16 | 41 | 0d | PE6; PE8; PE10; PE7; PE9 | 320h |
| 44 | 1.6.2.2 | Fix Found Defects | 18.12d | 2020-06-16 | 2020-07-10 | 43 | 0d | PE1; PE3; PE5; PE7; PE9 | 368h |
| 45 | 1.6.2.3 | Test Fixed Defects | 2.3d | 2020-07-10 | 2020-07-14 | 44 | 0d | PE2; PE4; PE6; PE8; PE10 | 92h |
| 46 | 1.6.3 | **Code Inspection** | 18.22d | 2020-07-14 | 2020-08-10 | 45 | 0d |  | 602.96h |
| 47 | 1.6.3.1 | Preparation for Code Inspection | 8.88d | 2020-07-14 | 2020-07-27 | 45 | 0d | PE1; RE1; SE5; TE1 | 284.16h |
| 48 | 1.6.3.2 | Code Inspection Meeting | 5.92d | 2020-07-27 | 2020-08-04 | 47 | 0d | PE1; RE1; SE5; TE1; PE7 | 236.8h |
| 49 | 1.6.3.3 | Rework | 3.42d | 2020-08-04 | 2020-08-10 | 48 | 0d | PE6; PE8; PE9 | 82h |

| ID | WBS | Task | Duration | Start | Finish | Predecessors | Total slack | Free slack | Constraint | Resources | Work |
| --- | --- | --- | --- | --- | --- | --- | --- | --- | --- | --- | --- |
| 50 | 1.7 | **Testing** | 194.57d | 2019-12-25 | 2020-09-22 | 22 | 0d |  |  |  | 1631.6h |
| 51 | 1.7.1 | Write Test Plan (TP) | 6.8d | 2019-12-25 | 2020-01-02 | 22 | 54.68d | 0d |  | TE1; TE3; TE5; TE7; TE9 | 272h |
| 52 | 1.7.2 | **Review TP** | 101.67d | 2020-01-02 | 2020-05-25 | 51 | 54.68d |  |  |  | 335.6h |
| 53 | 1.7.2.1 | Preparationn for TP | 11.9d | 2020-01-02 | 2020-05-18 | 51 | 54.68d | 0d |  | SE6; RE8; TE5; PE9 | 190.4h |
| 54 | 1.7.2.2 | Review TP Meeting | 2.98d | 2020-05-18 | 2020-05-21 | 53 | 54.68d | 0d |  | SE6; RE8; TE5; TE9; PE9 | 119.2h |
| 55 | 1.7.2.3 | Rework | 1.62d | 2020-05-21 | 2020-05-25 | 54 | 54.68d |  |  | TE1; TE3 | 26h |
| 56 | 1.7.3 | Execute TP(test cases) | 14.01d | 2020-08-10 | 2020-08-28 | 49, 55 | 0d |  | start no earlier than 2020-01-14 | TE2; TE4; TE6; TE8; TE10 | 328h |
| 57 | 1.7.4 | Fix Found Defects | 11.6d | 2020-08-28 | 2020-09-14 | 56 | 0d |  |  | TE1; TE3; TE5; TE7; TE9 | 464h |
| 58 | 1.7.5 | Test Fixed Defects | 5.8d | 2020-09-14 | 2020-09-22 | 57 | 0d |  |  | TE2; TE4; TE6; TE8; TE10 | 232h |
| 59 | 1.8 | **Documentation** | 22.66d | 2019-12-25 | 2020-01-24 | 22 | 171.91d |  |  |  | 497.52h |
| 60 | 1.8.1 | User Documentation | 2.97d | 2019-12-25 | 2019-12-27 | 22 | 171.91d | 0d |  | DE1; DE3; DE5; DE7 | 95.04h |
| 61 | 1.8.2 | **Review UD** | 19.68d | 2019-12-27 | 2020-01-24 | 60 | 171.91d |  |  |  | 402.48h |
| 62 | 1.8.2.1 | Preparation for UD Review | 14.13d | 2019-12-27 | 2020-01-17 | 60 | 171.91d | 0d |  | PE1; RE1; TE10; SE20 | 228.16h |
| 63 | 1.8.2.2 | Review UD Meeting | 3.56d | 2020-01-17 | 2020-01-22 | 62 | 171.91d | 0d |  | PE1; RE1; DE1; TE10; SE20 | 142.4h |
| 64 | 1.8.2.3 | Rework | 2d | 2020-01-22 | 2020-01-24 | 63 | 171.91d |  |  | DE1; DE3 | 31.92h |
